# NeCTAR Plan 24 Oct 2011

Schedule from MS Project, 2012-01-31 to 2012-12-20, costs in $.

## Calendars

- Standard: Mon-Fri 08:00-12:00, 13:00-17:00; Sat-Sun off.

## Resources

| Resource | Rate |
| --- | --- |
| Paul White | 108 |
| Eric Moses | 108 |
| Nik Zeps | 108 |
| Chris Ellis | 93.4 |
| Philippe LaFlamme | 93.4 |
| Andrew Mews | 63.6 |
| Lisa Spalding | 80 |
| Adrian Bickerstaffe | 76 |
| Programmer | 76 |
| Kelly Aujard | 80 |
| Rhonda DeSouza | 80 |

## Schedule

| ID | WBS | Task | Type | Duration | Start | Finish | Predecessors | Total slack | Free slack | Resources | Work | Cost |
| --- | --- | --- | --- | --- | --- | --- | --- | --- | --- | --- | --- | --- |
| 1 | 1 | **Project Establishment** |  | 21d | 2012-01-31 | 2012-02-28 |  | 0d |  |  |  |  |
| 2 | 1.1 | Contract Completion |  | 20d | 2012-01-31 | 2012-02-27 |  | 0d |  |  |  |  |
| 3 | 1.2 | Project Kickoff |  | 1d | 2012-02-28 | 2012-02-28 | 2 | 0d |  |  |  |  |
| 4 | 1.3 | Kickoff Complete | milestone | 0d | 2012-02-28 | 2012-02-28 | 3 | 0d |  |  |  |  |
| 5 | 2 | **Establish Support Tools & Processes** |  | 12d | 2012-02-29 | 2012-03-15 | 1 | 19d | 0d |  | 117.6h | 9,628.8 |
| 6 | 2.1 | Project Management |  | 12d | 2012-02-29 | 2012-03-15 |  | 19d |  | Paul White [15%]; Eric Moses [5%]; Nik Zeps [5%] | 21.6h | 2,332.8 |
| 7 | 2.2 | Install open source version of Jira & migrate |  | 1d | 2012-02-29 | 2012-02-29 |  | 19d | 0d | Programmer | 8h | 608 |
| 8 | 2.3 | Install open source version of Confluence & migrate |  | 1d | 2012-03-01 | 2012-03-01 | 7 | 19d | 0d | Programmer | 8h | 608 |
| 9 | 2.4 | Define & document procedures |  | 5d | 2012-03-02 | 2012-03-08 | 8 | 19d | 0d | Programmer | 40h | 3,040 |
| 10 | 2.5 | Update the Ark website |  | 5d | 2012-03-09 | 2012-03-15 | 9 | 19d | 0d | Programmer | 40h | 3,040 |
| 11 | 2.6 | Support Processes & Tools established | milestone | 0d | 2012-03-15 | 2012-03-15 | 10 | 19d |  |  |  |  |
| 12 | 3 | **Integration existing application with AAF Authentication Services** |  | 31d | 2012-03-15 | 2012-04-27 | 5 | 19d | 0d |  | 256.4h | 20,976.8 |
| 13 | 3.1 | Project Management |  | 31d | 2012-03-16 | 2012-04-27 |  | 19d |  | Paul White [15%]; Eric Moses [5%]; Nik Zeps [5%] | 44.4h | 4,795.2 |
| 14 | 3.2 | Develop Integration Approach |  | 5d | 2012-03-15 | 2012-03-22 |  | 19d | 0d | Programmer; Philippe LaFlamme [10%] | 4h | 373.6 |
| 15 | 3.3 | Complete Integration development (1 sprint) |  | 20d | 2012-03-23 | 2012-04-19 | 14 | 19d | 0d | Programmer | 160h | 12,160 |
| 16 | 3.4 | System Testing |  | 2d | 2012-04-20 | 2012-04-23 | 15 | 19d | 0d | Programmer | 16h | 1,216 |
| 17 | 3.5 | Security Testing |  | 4d | 2012-04-24 | 2012-04-27 | 16 | 19d | 0d | Programmer | 32h | 2,432 |
| 18 | 3.6 | AAF Integration complete | milestone | 0d | 2012-04-27 | 2012-04-27 | 17 | 19d |  |  |  |  |
| 19 | 4 | **Initial Production Research Cloud Deployment** |  | 82d | 2012-02-29 | 2012-06-21 | 1 | 0d |  |  | 549.6h | 50,638.4 |
| 20 | 4.1 | Project Management |  | 52d | 2012-02-29 | 2012-05-10 |  | 30d |  | Paul White [15%]; Eric Moses [5%]; Nik Zeps [5%] | 69.6h | 7,516.8 |
| 21 | 4.2 | Preliminary Data Migration |  | 40d | 2012-02-29 | 2012-05-08 |  | 0d |  | Chris Ellis; Andrew Mews [10%] | 192h | 16,979.2 |
| 22 | 4.3 | User Acceptance Testing |  | 10d | 2012-05-09 | 2012-05-22 | 21 | 0d |  | Andrew Mews [10%]; Lisa Spalding [10%]; Chris Ellis | 96h | 8,620.8 |
| 23 | 4.4 | Issue Resolution |  | 10d | 2012-05-23 | 2012-06-05 | 22 | 0d |  | Chris Ellis | 80h | 7,472 |
| 24 | 4.5 | Commissioning Testing |  | 5d | 2012-06-06 | 2012-06-12 | 23 | 0d |  | Andrew Mews [10%]; Lisa Spalding [10%]; Chris Ellis | 48h | 4,310.4 |
| 25 | 4.6 | Documentation Review & Update |  | 5d | 2012-06-13 | 2012-06-19 | 24 | 0d |  | Andrew Mews [20%]; Chris Ellis | 48h | 4,244.8 |
| 26 | 4.7 | Deployment to Production |  | 2d | 2012-06-20 | 2012-06-21 | 25 | 0d |  | Chris Ellis | 16h | 1,494.4 |
| 27 | 4.8 | Initial Research Cloud deployment complete | milestone | 0d | 2012-06-21 | 2012-06-21 | 26 | 0d |  |  |  |  |

| ID | WBS | Task | Type | Duration | Start | Finish | Predecessors | Total slack | Free slack | Resources | Work | Cost |
| --- | --- | --- | --- | --- | --- | --- | --- | --- | --- | --- | --- | --- |
| 28 | 5 | **Data Extraction for Analysis** |  | 40d | 2012-06-22 | 2012-08-16 | 19 | 0d |  |  | 416h | 40,256 |
| 29 | 5.1 | Project Management |  | 40d | 2012-06-22 | 2012-08-16 |  | 0d |  | Paul White [20%]; Eric Moses [5%]; Nik Zeps [5%] | 96h | 10,368 |
| 30 | 5.2 | Development, Testing & Deployment (2 sprints) |  | 40d | 2012-06-22 | 2012-08-16 | 19 | 0d |  | Chris Ellis | 320h | 29,888 |
| 31 | 5.3 | Data Extraction for Analysis complete | milestone | 0d | 2012-08-16 | 2012-08-16 | 30 | 0d |  |  |  |  |
| 32 | 6 | **Pedigree Storage & Visualisation** |  | 85d | 2012-04-27 | 2012-08-24 | 12 | 19d | 0d |  | 1076h | 86,542.4 |
| 33 | 6.1 | Project Management |  | 85d | 2012-04-30 | 2012-08-24 |  | 19d |  | Paul White [20%]; Eric Moses [5%]; Nik Zeps [5%] | 204h | 22,032 |
| 34 | 6.2 | Requirements Analysis |  | 5d | 2012-04-27 | 2012-05-04 |  | 19d | 0d | Programmer; Andrew Mews [10%]; Rhonda DeSouza [10%] | 8h | 574.4 |
| 35 | 6.3 | Development, Testing & Deployment (4 sprints) |  | 80d | 2012-05-07 | 2012-08-24 | 34 | 19d | 0d | Programmer; Andrew Mews [25%]; Rhonda DeSouza [10%] | 864h | 63,936 |
| 36 | 6.4 | Pedigree Storage & Visualisation Complete | milestone | 0d | 2012-08-24 | 2012-08-24 | 35 | 19d |  |  |  |  |
| 37 | 7 | **Enhanced Data Linkage & Reporting** |  | 65d | 2012-08-27 | 2012-11-23 | 32 | 19d |  |  | 432h | 36,811.2 |
| 38 | 7.1 | Project Management |  | 60d | 2012-08-27 | 2012-11-16 |  | 24d |  | Paul White [20%]; Eric Moses [5%]; Nik Zeps [5%] | 144h | 15,552 |
| 39 | 7.2 | Requirements Analysis |  | 5d | 2012-08-27 | 2012-08-31 |  | 19d | 0d | Andrew Mews [10%]; Programmer; Rhonda DeSouza [10%] | 48h | 3,614.4 |
| 40 | 7.3 | Development, Testing & Deployment (3 sprints) |  | 60d | 2012-09-03 | 2012-11-23 | 39 | 19d | 0d | Programmer; Andrew Mews [10%] | 240h | 17,644.8 |
| 41 | 7.4 | Data Linkage & Reporting module complete | milestone | 0d | 2012-11-23 | 2012-11-23 | 40 | 19d |  |  |  |  |
| 42 | 8 | **Integrated Invoicing & Billing** |  | 90d | 2012-02-29 | 2012-07-03 | 1 | 17d | 0d |  | 600h | 52,280 |
| 43 | 8.1 | Project Management |  | 90d | 2012-02-29 | 2012-07-03 |  | 17d |  | Paul White [20%]; Eric Moses [5%]; Nik Zeps [5%] | 216h | 23,328 |
| 44 | 8.2 | Requirements Analysis |  | 10d | 2012-02-29 | 2012-03-13 |  | 17d | 0d | Adrian Bickerstaffe [50%]; Andrew Mews [25%]; Kelly Aujard [5%] | 64h | 4,632 |
| 45 | 8.3 | Development, Testing & Deployment (2 sprints) |  | 80d | 2012-03-14 | 2012-07-03 | 44 | 17d | 0d | Adrian Bickerstaffe [50%] | 320h | 24,320 |
| 46 | 8.4 | Integrated Invoicing & Billing Complete | milestone | 0d | 2012-07-03 | 2012-07-03 | 45 | 17d |  |  |  |  |
| 47 | 9 | **Registry Management** |  | 105d | 2012-07-04 | 2012-11-27 | 42 | 17d |  |  | 714h | 62,496 |
| 48 | 9.1 | Project Management |  | 105d | 2012-07-04 | 2012-11-27 |  | 17d |  | Paul White [20%]; Eric Moses [5%]; Nik Zeps [5%] | 252h | 27,216 |
| 49 | 9.2 | Requirements Review |  | 5d | 2012-07-04 | 2012-07-10 |  | 17d | 0d | Kelly Aujard [5%]; Adrian Bickerstaffe [50%] | 22h | 1,680 |
| 50 | 9.3 | Development, Testing & Deployment (5 sprints) |  | 100d | 2012-07-11 | 2012-11-27 | 49 | 17d | 0d | Kelly Aujard [5%]; Adrian Bickerstaffe [50%] | 440h | 33,600 |
| 51 | 9.4 | Registry Management Complete | milestone | 0d | 2012-11-27 | 2012-11-27 | 50 | 17d |  |  |  |  |

| ID | WBS | Task | Type | Duration | Start | Finish | Predecessors | Total slack | Resources | Work | Cost |
| --- | --- | --- | --- | --- | --- | --- | --- | --- | --- | --- | --- |
| 52 | 10 | **Genotypic Data Management/Integration** |  | 90d | 2012-08-17 | 2012-12-20 | 28 | 0d |  | 1180h | 110,149.6 |
| 53 | 10.1 | Project Management |  | 90d | 2012-08-17 | 2012-12-20 |  | 0d | Paul White [20%]; Eric Moses [5%]; Nik Zeps [5%] | 216h | 23,328 |
| 54 | 10.2 | Determine approach to manage genotypic data |  | 10d | 2012-08-17 | 2012-08-30 |  | 0d | Philippe LaFlamme [5%]; Chris Ellis; Rhonda DeSouza | 164h | 14,245.6 |
| 55 | 10.3 | Development, Testing & Deployment (4 sprints) |  | 80d | 2012-08-31 | 2012-12-20 | 54 | 0d | Chris Ellis; Rhonda DeSouza [25%] | 800h | 72,576 |
| 56 | 10.4 | Genotypic Data Management/Integration Complete | milestone | 0d | 2012-12-20 | 2012-12-20 | 55 | 0d |  |  |  |
